# ProjectPhases

Schedule from MS Project, 2014-03-01 to 2018-08-30.

## Calendars

- Standard: Mon-Fri 08:00-12:00, 13:00-17:00; Sat-Sun off.

## Schedule

| ID | WBS | Task | Type | Duration | Start | Finish | Predecessors | Total slack | Free slack | Constraint | Deadline |
| --- | --- | --- | --- | --- | --- | --- | --- | --- | --- | --- | --- |
| 1 | 1 | Today | milestone, manual | 0d | 2014-03-01 | 2014-03-01 |  |  |  |  |  |
| 2 | 2 | **PAPER-128** |  | 299d | 2014-03-03 | 2015-04-23 |  | 0d |  |  |  |
| 3 | 2.1 | Season 1 | manual | 40d | 2014-03-03 | 2014-04-25 | 1 |  |  |  |  |
| 4 | 2.2 | Season 2 | manual | 125d | 2014-11-01 | 2015-04-23 |  |  |  |  |  |
| 5 | 3 | Project Start | milestone, manual | 0d | 2014-09-01 | 2014-09-01 |  |  |  |  |  |
| 6 | 4 | **Preparation and prototyping** |  | 469d | 2014-09-01 | 2016-06-16 |  | -32d | 0d |  |  |
| 7 | 4.1 | **Site prep I** |  | 145d | 2014-09-01 | 2015-03-20 | 5 | 768d | 0d |  |  |
| 8 | 4.1.1 | Area prep |  | 40d | 2014-09-01 | 2014-10-24 | 5 | 768d | 0d |  |  |
| 9 | 4.1.2 | Fiber to site |  | 60d | 2014-10-27 | 2015-01-16 | 8 | 768d | 0d |  |  |
| 10 | 4.1.3 | Power to site |  | 60d | 2014-10-27 | 2015-01-16 | 8 | 768d | 0d |  |  |
| 11 | 4.1.4 | Intra-array reticulation |  | 45d | 2015-01-19 | 2015-03-20 | 8, 9, 10 | 768d |  |  |  |
| 12 | 4.2 | GB-2 (construct/analysis) |  | 200d | 2014-10-01 | 2015-07-07 | 5 | -44d | 0d | start no earlier than 2014-10-01 |  |
| 13 | 4.3 | Element CDR | milestone | 0d | 2015-07-07 | 2015-07-07 | 12 | 821d |  |  |  |
| 14 | 4.4 | HERA-3 |  | 30d | 2015-07-08 | 2015-08-18 | 12 | -44d | 0d |  |  |
| 15 | 4.5 | Element PRR | milestone | 0d | 2015-09-15 | 2015-09-15 | 14FS+20d | -44d | 0d |  |  |
| 16 | 4.6 | PAPER-relocation |  | 100d | 2015-04-24 | 2015-09-10 | 4 | 574d | 0d |  |  |
| 17 | 4.7 | PAPER-Img128 |  | 200d | 2015-09-11 | 2016-06-16 | 16 | 574d |  | start no earlier than 2015-05-04 |  |
| 18 | 4.8 | Frontend development |  | 200d | 2014-09-01 | 2015-06-05 | 5 | 663d | 0d |  |  |
| 19 | 5 | **HERA-127** |  | 517d | 2015-05-04 | 2017-04-25 |  | 83d |  |  |  |
| 20 | 5.1 | Site prep II |  | 100d | 2015-05-04 | 2015-09-18 | 7FS+30d | 768d |  |  |  |
| 21 | 5.2 | Pole contract |  | 120d | 2015-10-14 | 2016-03-29 | 15FS+20d | 631d |  |  |  |
| 22 | 5.3 | Element installation |  | 170d | 2015-11-11 | 2016-07-05 | 15FS+40d | -54d | 0d |  |  |
| 23 | 5.4 | QAServer |  | 15d | 2016-06-01 | 2016-06-21 |  | -126d | 0d | start no earlier than 2016-06-01 |  |
| 24 | 5.5 | Commissioning |  | 60d | 2016-06-22 | 2016-09-13 | 23 | 511d |  |  |  |
| 25 | 5.6 | Science observations |  | 220d | 2016-06-22 | 2017-04-25 | 23 | -126d | 0d |  | 2016-10-31 |
| 26 | 5.7 | Frontend prototype testing |  | 60d | 2015-06-08 | 2015-08-28 | 18 | 663d | 0d |  |  |
| 27 | 5.8 | Front-end CDR | milestone | 0d | 2015-08-28 | 2015-08-28 | 26 | 663d | 0d |  |  |

| ID | WBS | Task | Type | Duration | Start | Finish | Predecessors | Total slack | Free slack | Constraint | Deadline |
| --- | --- | --- | --- | --- | --- | --- | --- | --- | --- | --- | --- |
| 28 | 6 | **HERA-331** |  | 783d | 2015-08-31 | 2018-08-30 |  | 0d |  |  |  |
| 29 | 6.1 | Front-end retro-install |  | 120d | 2015-08-31 | 2016-02-12 | 27 | 663d |  |  |  |
| 30 | 6.2 | Element installation |  | 200d | 2016-07-06 | 2017-04-11 | 22 | -54d | 0d |  |  |
| 31 | 6.3 | Node CDR | milestone | 0d | 2016-09-01 | 2016-09-01 |  | -90d | 0d | start no earlier than 2016-09-01 |  |
| 32 | 6.4 | Node installation |  | 150d | 2016-11-03 | 2017-05-31 | 31FS+45d | -90d | 0d |  |  |
| 33 | 6.5 | Penn cluster installation |  | 30d | 2017-05-01 | 2017-06-09 |  | 273d | 0d | start no earlier than 2017-05-01 |  |
| 34 | 6.6 | KAPB installation |  | 15d | 2017-05-01 | 2017-05-19 | 33SS | 273d | 0d |  |  |
| 35 | 6.7 | Commissioning |  | 60d | 2017-05-22 | 2017-08-11 | 34 | 273d |  |  |  |
| 36 | 6.8 | Science observations |  | 180d | 2017-06-29 | 2018-03-07 | 30FS+20d, 32FS+20d | -90d | 0d |  | 2017-11-01 |
| 37 | 6.9 | Project End | milestone, manual | 0d | 2018-08-30 | 2018-08-30 |  |  |  | start no earlier than 2018-08-30 |  |
